# project tesis

Schedule from MS Project, 2017-05-30 to 2017-10-09, costs in S/., A marks actual dates.

## Calendars

- calendario Pedidos: Mon-Fri 09:00-13:00, 15:00-19:00; Sat-Sun off. Exceptions (off unless hours are given): 2017-07-28 09:00-13:00, 15:00-19:00, 2017-08-15 09:00-13:00, 15:00-19:00.

## Resources

| Resource | Rate |
| --- | --- |
| analista | 50 |
| developer2 | 30 |
| developer | 30 |
| manager | 80 |
| tester | 40 |
| revisor |  |

## Schedule

| ID | WBS | Task | Type | Duration | Start | Finish | Predecessors | Complete | Remaining | Total slack | Free slack | Constraint | Resources | Work | Actual work | Cost | Actual cost | fecha inicio real | fecha fin real |
| --- | --- | --- | --- | --- | --- | --- | --- | --- | --- | --- | --- | --- | --- | --- | --- | --- | --- | --- | --- |
| 1 | 1 | Diseño e Implementación de un Sistema Web con Aplicación Móvil para Pedidos Delivery de Cevicheria Pepe Tiburón |  | 1d? | 2017-07-10 | 2017-07-10 |  |  |  | 65d |  |  |  |  |  |  |  |  |  |
| 2 | 2 | **Iniciación del Proyecto** |  | 15d | 2017-05-30 A | 2017-06-19 |  | 48% | 7.76d | 65d |  |  |  | 172h | 56h | 9,800 | 3,760 |  |  |
| 3 | 2.1 | **Inicio** |  | 4d | 2017-05-30 A | 2017-06-02 |  | 99% | 0d |  |  |  | analista | 64h | 32h | 4,160 | 2,560 |  |  |
| 4 | 2.1.1 | Reunión de Inicio |  | 1d? | 2017-05-30 A | 2017-05-30 A |  | 100% |  |  |  |  | manager | 8h | 8h | 640 | 640 | 30-05-2017 | 30-05-2017 |
| 5 | 2.1.2 | levantamiento de información |  | 1d? | 2017-05-31 A | 2017-05-31 A | 4 | 100% |  |  |  |  | manager | 8h | 8h | 640 | 640 | 31-05-217 | 31-05-2017 |
| 6 | 2.1.3 | propuestas de prototipos |  | 1d? | 2017-06-01 A | 2017-06-01 A | 5 | 100% |  |  |  |  | manager | 8h | 8h | 640 | 640 | 01-06-2017 | 01-06-2017 |
| 7 | 2.1.4 | Acta de Incio |  | 1d? | 2017-06-02 A | 2017-06-02 A | 6 | 100% |  |  |  |  | manager | 8h | 8h | 640 | 640 | 01-06-2017 | 01-06-2017 |
| 8 | 2.2 | **Planificación** |  | 11d | 2017-06-05 A | 2017-06-19 |  | 29% | 7.86d |  |  |  |  | 108h | 24h | 5,640 | 1,200 |  |  |
| 9 | 2.2.1 | Plan de Gestión del Proyecto |  | 1d? | 2017-06-05 A | 2017-06-05 A | 7 | 100% |  |  |  | start no earlier than 2017-06-05 | analista | 8h | 8h | 400 | 400 | 02-06-2017 | 02-06-2017 |
| 10 | 2.2.2 | EDT |  | 1d? | 2017-06-06 A | 2017-06-06 A | 9 | 100% |  |  |  |  | analista | 8h | 8h | 400 | 400 | 05-06-2017 | 05-06-2017 |
| 11 | 2.2.3 | Cronograma a nivel macro |  | 1d? | 2017-06-07 A | 2017-06-07 A | 10 | 100% |  |  |  |  | analista | 8h | 8h | 400 | 400 | 06-06-2017 | 06-06-2017 |
| 12 | 2.2.4 | Presupuesto | milestone | 0d? | 2017-06-07 A | 2017-06-07 A | 11 | 100% |  |  |  |  | analista |  |  |  |  | 06-06-2017 | 06-06-2017 |
| 13 | 2.2.5 | Riesgos | milestone | 0d? | 2017-06-06 A | 2017-06-06 A | 12 | 100% |  |  |  |  | analista |  |  |  |  | 07-06-2017 | 07-06-2017 |
| 14 | 2.2.6 | diagrama de contexto |  | 0.5d? | 2017-06-07 | 2017-06-07 | 13 |  |  | 66.5d | 0d |  | analista | 4h |  | 200 |  | 07-06-2017 | 07-06-2017 |
| 15 | 2.2.7 | matriz de trazabilidad |  | 1d? | 2017-06-07 | 2017-06-08 | 14 |  |  | 66.5d | 0d |  | analista | 8h |  | 400 |  | 08-06-2017 | 08-06-2017 |
| 16 | 2.2.8 | **Control** |  | 4.5d? | 2017-06-08 | 2017-06-14 |  |  |  | 66d |  |  |  | 56h |  | 2,560 |  |  |  |
| 17 | 2.2.8.1 | Reunión Semanal cliente |  | 1d? | 2017-06-08 | 2017-06-09 | 15 |  |  | 66.5d | 0.5d |  | manager | 8h |  | 640 |  | 09-06-2017 | 09-06-2017 |
| 18 | 2.2.8.2 | Revision de pares |  | 3d? | 2017-06-12 | 2017-06-14 | 17 |  |  | 66d | 0d | finish no earlier than 2017-06-14 | revisor; manager | 48h |  | 1,920 |  | 09-06-2017 | 09-06-2017 |
| 19 | 2.2.9 | **Cierre** |  | 2d? | 2017-06-15 | 2017-06-16 |  |  |  | 66d |  |  |  | 16h |  | 1,280 |  |  |  |
| 20 | 2.2.9.1 | Entrega de artefactos | milestone | 1d? | 2017-06-15 | 2017-06-15 | 18 |  |  | 66d | 0d |  | manager | 8h |  | 640 |  | 12-06-2017 | 12-06-2017 |
| 21 | 2.2.9.2 | Emisión de project charter | milestone | 1d? | 2017-06-16 | 2017-06-16 | 20 |  |  | 66d | 0d |  | manager | 8h |  | 640 |  | 13-06-2017 | 13-06-2017 |
| 22 | 3 | **Análisis de Requisitos** |  | 16d | 2017-06-20 | 2017-07-11 |  |  |  |  |  |  |  | 152h |  | 7,600 |  |  |  |
| 23 | 3.1 | **Planificación** |  | 11d | 2017-06-20 | 2017-07-04 |  |  |  |  |  |  |  | 88h |  | 4,400 |  |  |  |
| 24 | 3.1.1 | Requerimientos Funcionales |  | 3d | 2017-06-19 | 2017-06-21 | 21 |  |  | 66d | 0d | start no earlier than 2017-06-15 | analista | 24h |  | 1,200 |  | 14-06-2017 | 17-06-2017 |
| 25 | 3.1.2 | Requisitos no funcionales |  | 1d? | 2017-06-22 | 2017-06-22 | 24 |  |  | 66d | 0d | start no earlier than 2017-06-20 | analista | 8h |  | 400 |  | 18-06-2017 | 18-06-2017 |
| 26 | 3.1.3 | Diagrama casos de uso |  | 3d | 2017-06-23 | 2017-06-27 | 25 |  |  | 66d | 0d |  | analista | 24h |  | 1,200 |  | 19-06-2017 | 21-06-2017 |
| 27 | 3.1.4 | Diagrama de arquitectura |  | 1d | 2017-06-28 | 2017-06-28 | 26 |  |  | 66d | 0d |  | analista | 8h |  | 400 |  | 22-06-2017 | 22-06-2017 |
| 28 | 3.1.5 | Contratos casos de uso |  | 3d | 2017-06-29 | 2017-07-03 | 27 |  |  | 66d | 0d |  | analista | 24h |  | 1,200 |  | 23-06-2017 | 27-06-2017 |

| ID | WBS | Task | Type | Duration | Start | Finish | Predecessors | Total slack | Free slack | Constraint | Resources | Work | Cost | fecha inicio real | fecha fin real |
| --- | --- | --- | --- | --- | --- | --- | --- | --- | --- | --- | --- | --- | --- | --- | --- |
| 29 | 3.2 | **Control** |  | 4d? | 2017-07-04 | 2017-07-07 |  | 66d |  |  |  | 56h | 2,560 |  |  |
| 30 | 3.2.1 | Reunión Semanal cliente |  | 1d? | 2017-07-04 | 2017-07-04 | 28 | 66d | 0d | start no earlier than 2017-06-22 | manager | 8h | 640 | 28-06-2017 | 28-06-2017 |
| 31 | 3.2.2 | Revision de pares |  | 3d | 2017-07-05 | 2017-07-07 | 30 | 66d |  | start no earlier than 2017-07-05 | revisor; manager | 48h | 1,920 | 29-06-2017 | 30-06-2017 |
| 32 | 3.3 | **Cierre** |  | 1d? | 2017-07-10 | 2017-07-10 |  | 64d |  |  |  | 8h | 640 |  |  |
| 33 | 3.3.1 | Entrega de casos de uso y contratos | milestone | 1d? | 2017-07-10 | 2017-07-10 |  | 64d | 0d | start no earlier than 2017-07-10 | manager | 8h | 640 | 30-06-2017 | 30-06-2017 |
| 34 | 4 | **Diseño** |  | 13d | 2017-07-11 | 2017-07-27 |  |  |  |  |  | 96h | 4,960 |  |  |
| 35 | 4.1 | Especficacion de diseño tecnico |  | 1d? | 2017-07-11 | 2017-07-11 | 33 | 64d |  |  | developer2 | 8h | 240 | 03-07-2017 | 03-07-2017 |
| 36 | 4.2 | **Diagrama del sitema** |  | 9d | 2017-07-12 | 2017-07-24 |  |  |  |  |  | 64h | 3,200 |  |  |
| 37 | 4.2.1 | Diagrama de Actividades |  | 3d | 2017-07-12 | 2017-07-14 |  | 40d | 0d | start no earlier than 2017-07-12 | analista | 24h | 1,200 | 04-07-2017 | 06-07-2017 |
| 38 | 4.2.2 | Diagrama de Secuencia |  | 2d | 2017-07-17 | 2017-07-18 | 37 | 40d | 0d | start no earlier than 2017-07-17 | analista | 16h | 800 | 07-07-2017 | 11-07-2017 |
| 39 | 4.2.3 | Diagrama de componentes |  | 1d | 2017-07-19 | 2017-07-19 | 38 | 40d | 0d |  | analista | 8h | 400 | 12-07-2017 | 12-07-2017 |
| 40 | 4.2.4 | Diagrama de comunicaciones |  | 1d? | 2017-07-20 | 2017-07-20 | 39 | 40d | 0d |  | analista | 8h | 400 | 13-07-2017 | 13-07-2017 |
| 41 | 4.2.5 | Diagrama de despliegue |  | 1d? | 2017-07-21 | 2017-07-21 | 40 | 56d |  |  | analista | 8h | 400 | 14-07-2017 | 14-07-2017 |
| 42 | 4.3 | **Modelo de datos** |  | 2d? | 2017-07-24 | 2017-07-25 |  | 2d | 1d |  |  | 16h | 1,280 |  |  |
| 43 | 4.3.1 | Diagrama de clases Boundary |  | 1d? | 2017-07-24 | 2017-07-24 |  | 2d | 0d | start no earlier than 2017-07-24 | manager | 8h | 640 | 17-07-2017 | 18-07-2017 |
| 44 | 4.3.2 | Diagrama de clases Control |  | 1d? | 2017-07-25 | 2017-07-25 | 43 | 2d |  | start no earlier than 2017-07-25 | manager | 8h | 640 | 19-07-2017 | 20-07-2017 |
| 45 | 4.4 | **Modelo entidad relacion** |  | 1d? | 2017-07-26 | 2017-07-26 |  | 37d |  |  |  | 8h | 240 |  |  |
| 46 | 4.4.1 | Diagrama de Entidad relación |  | 1d? | 2017-07-26 | 2017-07-26 | 40 | 37d | 0d | start no earlier than 2017-07-26 | developer2 | 8h | 240 | 21-07-2017 | 21-07-2017 |
| 47 | 5 | **Construcción de Componentes** |  | 27d | 2017-07-27 | 2017-09-01 | 42 |  |  |  |  | 248h | 9,120 |  |  |
| 48 | 5.1 | Creacion de ambientes de desarrollo | milestone | 1d | 2017-07-27 | 2017-07-27 | 46 | 37d | 0d | start no earlier than 2017-07-27 | tester | 8h | 320 | 24-07-2017 | 24-07-2017 |
| 49 | 5.2 | **Aplicación web** |  | 20d? | 2017-07-28 | 2017-08-24 |  | 0d |  |  |  | 160h | 4,800 |  |  |
| 50 | 5.2.1 | **Modulo de administracion** |  | 20d | 2017-07-28 | 2017-08-24 |  |  |  |  |  | 96h | 2,880 |  |  |
| 51 | 5.2.1.1 | Login Ingreso |  | 1d? | 2017-07-28 | 2017-07-28 | 48 | 37d | 0d | start no earlier than 2017-06-28 | developer | 8h | 240 | 25-07-2017 | 25-07-2017 |
| 52 | 5.2.1.2 | Mantenimiento de Empleados |  | 1d | 2017-07-31 | 2017-07-31 | 51 | 37d | 0d |  | developer2 | 8h | 240 | 25-07-2017 | 25-07-2017 |
| 53 | 5.2.1.3 | Mantenimiento de Platos |  | 1d | 2017-08-01 | 2017-08-01 | 52 | 37d | 0d |  | developer | 8h | 240 | 26-07-2017 | 26-07-2017 |
| 54 | 5.2.1.4 | Gestión de Pedidos |  | 2d | 2017-08-02 | 2017-08-03 | 53 | 37d | 0d | finish no earlier than 2017-08-03 | developer | 16h | 480 | 27-07-2017 | 02-08-2017 |
| 55 | 5.2.1.5 | Estado de Pedido |  | 1.25d | 2017-08-04 | 2017-08-07 | 54 | 37d | 0d | start no earlier than 2017-08-04 | developer2 | 10h | 300 | 03-08-2017 | 04-08-2017 |
| 56 | 5.2.1.6 | Pedidos atendidos |  | 0.75d? | 2017-08-07 | 2017-08-07 | 55 | 37d | 0d |  | developer | 6h | 180 | 07-08-2017 | 07-08-2017 |
| 57 | 5.2.1.7 | Pedidos devueltos |  | 1d? | 2017-08-08 | 2017-08-08 | 56 | 37d | 0d | start no earlier than 2017-08-08 | developer2 | 8h | 240 | 08-08-2017 | 08-08-2017 |
| 58 | 5.2.1.8 | Reportes de pedidos parametrizado (por fechas, por motos, por estado) |  | 2d? | 2017-08-09 | 2017-08-10 | 57 | 37d | 0d | start no earlier than 2017-08-09 | developer | 16h | 480 | 09-08-2017 | 11-08-2017 |
| 59 | 5.2.1.9 | Platos más pedidos |  | 1d? | 2017-08-11 | 2017-08-11 | 58 | 37d | 0d |  | developer | 8h | 240 | 11-08-2017 | 14-08-2017 |
| 60 | 5.2.1.10 | Ventas del mes (filtrado por fechas) |  | 1d? | 2017-08-14 | 2017-08-14 | 59 | 37d | 0d |  | developer2 | 8h | 240 | 14-08-2017 | 14-08-2017 |

| ID | WBS | Task | Type | Duration | Start | Finish | Predecessors | Total slack | Free slack | Constraint | Resources | Work | Cost | fecha inicio real | fecha fin real |
| --- | --- | --- | --- | --- | --- | --- | --- | --- | --- | --- | --- | --- | --- | --- | --- |
| 61 | 5.2.2 | **Modulo de cocina** |  | 4d? | 2017-08-15 | 2017-08-18 |  |  |  |  |  | 32h | 960 |  |  |
| 62 | 5.2.2.1 | Login Ingreso |  | 1d? | 2017-08-15 | 2017-08-15 | 60 | 37d | 0d | start no earlier than 2017-08-15 | developer2 | 8h | 240 | 15-08-2017 | 15-08-2017 |
| 63 | 5.2.2.2 | Consulta pedidos por atender (cola de atención) |  | 1d? | 2017-08-16 | 2017-08-16 | 62 | 37d | 0d |  | developer | 8h | 240 | 16-08-2017 | 16-08-2017 |
| 64 | 5.2.2.3 | Cocinero marca los pedidos atendidos para sacarlos de la cola |  | 1d? | 2017-08-17 | 2017-08-17 | 63 | 37d |  |  | developer2 | 8h | 240 | 17-08-2017 | 17-08-2017 |
| 65 | 5.2.2.4 | Registrar Observacion |  | 1d? | 2017-08-18 | 2017-08-18 |  | 36d |  | start no earlier than 2017-08-18 | developer | 8h | 240 | 18-08-2017 | 18-07-2017 |
| 66 | 5.2.3 | **Modulo de caja** |  | 4d | 2017-08-15 | 2017-08-18 |  |  |  |  |  | 32h | 960 |  |  |
| 67 | 5.2.3.1 | Crea un tipo de documento según pedido |  | 2d? | 2017-08-15 | 2017-08-16 |  | 2d | 0d | start no earlier than 2017-08-15 | developer | 16h | 480 | 21-08-2017 | 22-08-2017 |
| 68 | 5.2.3.2 | Impresión del tipo de documento |  | 1d? | 2017-08-17 | 2017-08-17 | 67 | 2d | 0d | start no earlier than 2017-08-17 | developer2 | 8h | 240 | 23-08-2017 | 23-08-2017 |
| 69 | 5.2.3.3 | Cambia estado de pedido |  | 1d? | 2017-08-18 | 2017-08-18 | 68 | 2d | 0d |  | developer2 | 8h | 240 | 24-08-2017 | 24-08-2017 |
| 70 | 5.3 | **Aplicación Movil** |  | 6d? | 2017-08-21 | 2017-08-28 |  | 2d |  |  |  | 48h | 1,440 |  |  |
| 71 | 5.3.1 | **Modulo de cliente** |  | 6d? | 2017-08-21 | 2017-08-28 |  | 2d |  |  |  | 48h | 1,440 |  |  |
| 72 | 5.3.1.1 | Login Ingreso |  | 1d? | 2017-08-21 | 2017-08-21 | 69 | 2d | 0d | start no earlier than 2017-08-21 | developer2 | 8h | 240 | 23-08-2017 | 23-08-2017 |
| 73 | 5.3.1.2 | Registro de Cliente |  | 1d? | 2017-08-22 | 2017-08-22 | 72 | 2d | 0d |  | developer | 8h | 240 | 24-08-2017 | 24-08-2017 |
| 74 | 5.3.1.3 | Carta virtual |  | 2d? | 2017-08-23 | 2017-08-24 | 73 | 2d | 0d |  | developer2 | 16h | 480 | 24-08-2017 | 29-08-2017 |
| 75 | 5.3.1.4 | Registro de pedido |  | 2d? | 2017-08-25 | 2017-08-28 | 74 | 2d | 0d |  | developer2 | 16h | 480 | 24-08-2017 | 31-05-2017 |
| 76 | 5.4 | **Cierre** |  | 4d | 2017-08-29 | 2017-09-01 |  | 2d |  |  |  | 32h | 2,560 |  |  |
| 77 | 5.4.1 | Modulos del sistema | milestone | 4d | 2017-08-29 | 2017-09-01 | 75 | 2d | 0d |  | manager | 32h | 2,560 | 26-08-2017 |  |
| 78 | 6 | **Testing** |  | 16d? | 2017-09-04 | 2017-09-25 |  | 2d |  |  |  | 240h | 6,080 |  |  |
| 79 | 6.1 | Ambiente de Pruebas |  | 1d? | 2017-09-04 | 2017-09-04 | 77 | 2d | 0d |  | tester | 8h | 320 |  |  |
| 80 | 6.2 | **Pruebas Unitarias** |  | 2d | 2017-09-05 | 2017-09-06 |  | 2d |  |  | tester | 32h | 960 |  |  |
| 81 | 6.2.1 | comparar valores |  | 1d | 2017-09-05 | 2017-09-05 | 79 | 2d | 0d |  | tester | 8h | 320 |  |  |
| 82 | 6.2.2 | comprobar resultados |  | 1d | 2017-09-06 | 2017-09-06 | 81 | 2d | 0d |  |  | 8h |  |  |  |
| 83 | 6.3 | **Pruebas Seguridad** |  | 13d? | 2017-09-07 | 2017-09-25 |  | 2d |  |  | tester | 200h | 4,800 |  |  |
| 84 | 6.3.1 | Pruebas de Integración |  | 2d? | 2017-09-07 | 2017-09-08 | 82 | 2d | 0d | finish no earlier than 2017-09-08 |  | 16h |  |  |  |
| 85 | 6.3.2 | Ataques de Cross−Site Scripting |  | 2d? | 2017-09-11 | 2017-09-12 | 84 | 2d | 0d | start no earlier than 2017-09-08 | tester | 16h | 640 |  |  |
| 86 | 6.3.3 | Cross−Site Request Forgeries |  | 1d? | 2017-09-13 | 2017-09-13 | 85 | 2d | 0d | start no earlier than 2017-09-13 |  | 8h |  |  |  |
| 87 | 6.3.4 | Peticiones HTTP Falsificadas |  | 1d? | 2017-09-14 | 2017-09-14 | 86 | 2d | 0d | start no earlier than 2017-09-13 |  | 4h |  |  |  |
| 88 | 6.3.5 | Envío de Formas falsificadas |  | 1d? | 2017-09-15 | 2017-09-15 | 87 | 2d | 0d |  |  | 4h |  |  |  |
| 89 | 6.3.6 | Ataques de Fuerza Bruta |  | 3d | 2017-09-18 | 2017-09-20 | 88 | 2d | 0d |  |  | 24h |  |  |  |
| 90 | 6.3.7 | SQL Injection |  | 3d | 2017-09-21 | 2017-09-25 | 89 | 10d |  |  |  | 24h |  |  |  |

| ID | WBS | Task | Type | Duration | Start | Finish | Predecessors | Total slack | Constraint | Resources | Work | Cost |
| --- | --- | --- | --- | --- | --- | --- | --- | --- | --- | --- | --- | --- |
| 91 | 7 | **Pase a Producción** |  | 7d | 2017-09-25 | 2017-10-03 |  |  |  |  | 80h | 2,560 |
| 92 | 7.1 | **Entregables del Sistema** |  | 2d? | 2017-09-25 | 2017-09-26 | 89 | 0d |  | manager | 32h | 1,280 |
| 93 | 7.1.1 | Manuales de usuario |  | 1d? | 2017-09-25 | 2017-09-25 | 85 | 0d |  |  | 8h |  |
| 94 | 7.1.2 | Manual del sistema |  | 1d? | 2017-09-26 | 2017-09-26 | 93 | 0d |  |  | 8h |  |
| 95 | 7.2 | **Manual de instalación** |  | 5d | 2017-09-27 | 2017-10-03 |  |  |  |  | 48h | 1,280 |
| 96 | 7.2.1 | Checklist de los Requerimientos | milestone | 2d? | 2017-09-27 | 2017-09-28 | 94 | 0d |  | manager | 16h | 1,280 |
| 97 | 7.2.2 | checklist de requisitos funcionales |  | 2d? | 2017-09-29 | 2017-10-02 | 96 | 0d | start no earlier than 2017-09-12 |  | 16h |  |
| 98 | 7.2.3 | checklist de modulos del sistema |  | 1d? | 2017-10-03 | 2017-10-03 | 97 | 0d | finish no earlier than 2017-09-22 |  | 16h |  |
| 99 | 8 | **Soporte PostPase** |  | 1d | 2017-10-04 | 2017-10-04 |  |  |  |  | 8h |  |
| 100 | 8.1 | Capacitación del Sistema |  | 1d? | 2017-10-04 | 2017-10-04 | 98 | 0d |  |  | 8h |  |
| 101 | 9 | **Capacitaciones** |  | 3d | 2017-10-05 | 2017-10-09 |  | 0d |  |  | 24h | 720 |
| 102 | 9.1 | Implentación del sistema en la empresa |  | 3d | 2017-10-05 | 2017-10-09 | 100 | 0d |  | developer2 | 24h | 720 |
